# ProyectoDLC

Schedule from MS Project, 2017-09-04 to 2020-02-03, costs in €, A marks actual dates.

## Calendars

- Estándar: Mon-Fri 09:00-13:00, 15:00-19:00; Sat-Sun off.
- Sensores: Mon-Sun 09:00-13:00, 15:00-19:00.

## Resources

| Resource | Group | Rate |
| --- | --- | --- |
| Alvaro Ibrain Rodriguez | Data Scientist | 10 |
| Elsa Cerezo Fernandez | Data Scientist | 10 |
| Julia Ruiz Salmon | Data Scientist | 10 |
| Miguel Traspuesto Abascal | Becario | 5 |
| Miguel Carlos Blanco Cacharron | Data Scientist | 10 |
| Razvan Pascal | Project Manager | 15 |
| Presentación del informe 2018 |  |  |
| Empresa externa |  |  |

## Schedule

| ID | WBS | Task | Type | Duration | Start | Finish | Predecessors | Complete | Total slack | Free slack | Constraint | Calendar | Resources | Work | Actual work | Cost | Actual cost |
| --- | --- | --- | --- | --- | --- | --- | --- | --- | --- | --- | --- | --- | --- | --- | --- | --- | --- |
| 1 | 1 | **Planificación Calidad del Aire 2018** |  | 507d | 2017-09-04 A | 2019-01-23 A |  | 100% |  |  |  | Sensores |  | 4952h | 4952h | 44,360 | 44,360 |
| 2 | 1.1 | **1. Creating Data** |  | 345d | 2017-09-04 A | 2018-12-28 A |  | 100% |  |  |  |  |  | 768h | 768h | 2,600 | 2,600 |
| 3 | 1.1.1 | Definición del proyecto |  | 20d | 2017-09-04 A | 2017-09-29 A |  | 100% |  |  | finish no earlier than 2017-09-29 |  | Elsa Cerezo Fernandez | 160h | 160h | 1,600 | 1,600 |
| 4 | 1.1.2 | Data Management Plan (DMP) |  | 10d | 2017-09-18 A | 2017-09-29 A | 3FF | 100% |  |  |  |  | Miguel Traspuesto Abascal | 80h | 80h | 400 | 400 |
| 5 | 1.1.3 | Definición de los metadatos |  | 3d | 2017-09-20 A | 2017-10-02 A | 4SS+2d, 3 | 100% |  |  |  |  | Julia Ruiz Salmon | 24h | 24h | 240 | 240 |
| 6 | 1.1.4 | Diagrama de Gantt |  | 3d | 2017-09-20 A | 2017-09-22 A | 3SS | 100% |  |  |  |  | Razvan Pascal | 24h | 24h | 360 | 360 |
| 7 | 1.1.5 | Plan de preservación | manual | 5d | 2017-09-25 A | 2017-09-29 A | 4SS+5d | 100% |  |  |  |  |  |  |  |  |  |
| 8 | 1.1.6 | Instalación de los sensores |  | 60d | 2017-10-02 A | 2017-12-22 A | 4, 3 | 100% |  |  |  |  | Empresa externa | 480h | 480h |  |  |
| 9 | 1.1.7 | Revisión del DMP | manual | 4d | 2018-06-18 A | 2018-12-28 A |  | 100% |  |  |  |  |  |  |  |  |  |
| 10 | 1.2 | **2. Processing Data** |  | 366d | 2018-01-01 A | 2019-01-01 A |  | 100% |  |  |  | Sensores |  | 4176h | 4176h | 41,760 | 41,760 |
| 11 | 1.2.1 | Recolección de los datos |  | 365d | 2018-01-01 A | 2018-12-31 A | 8 | 100% |  |  | start no earlier than 2018-01-01 | Sensores |  |  |  |  |  |
| 12 | 1.2.2 | Curación de los datos | manual | 365d | 2018-01-02 A | 2019-01-01 A | 11SS+1d | 100% |  |  | finish no earlier than 2019-01-01 | Sensores | Alvaro Ibrain Rodriguez; Miguel Carlos Blanco Cacharron | 4176h | 4176h | 41,760 | 41,760 |
| 13 | 1.3 | **3. Analysing Data** |  | 16d | 2019-01-02 A | 2019-01-23 A |  | 100% |  |  |  |  |  | 8h | 8h |  |  |
| 14 | 1.3.1 | Análisis y conclusiones de los datos |  | 10d | 2019-01-02 A | 2019-01-15 A | 12 | 100% |  |  |  |  |  |  |  |  |  |
| 15 | 1.3.2 | Presentación del informe 2018 | milestone | 1d | 2019-01-23 A | 2019-01-23 A | 14FS+5d | 100% |  |  | start no earlier than 2019-01-23 |  | Presentación del informe 2018 | 8h | 8h |  |  |
| 16 | 1.4 | **4. Preserving Data** |  | 4d | 2019-01-16 A | 2019-01-21 A |  | 100% |  |  |  |  |  |  |  |  |  |
| 17 | 1.4.1 | Subida a UCREA |  | 4d | 2019-01-16 A | 2019-01-21 A | 12, 14 | 100% |  |  |  |  |  |  |  |  |  |
| 18 | 1.5 | **5. Giving Access to Data** |  | 1d | 2019-01-22 A | 2019-01-22 A |  | 100% |  |  |  |  |  |  |  |  |  |
| 19 | 1.5.1 | Subida a UCREA |  | 1d | 2019-01-22 A | 2019-01-22 A | 17 | 100% |  |  | start no earlier than 2019-01-22 |  |  |  |  |  |  |
| 20 | 1.6 | **6. Re-Using Data** |  | 1d | 2018-11-05 A | 2018-11-05 A |  | 100% |  |  |  |  |  |  |  |  |  |
| 21 | 1.6.1 | Proyecto 2019 |  | 1d | 2018-11-05 A | 2018-11-05 A |  | 100% |  |  | start no earlier than 2018-11-05 |  |  |  |  |  |  |
| 22 | 2 | **Planificación Calidad del Aire 2019** |  | 455d | 2018-11-06 | 2020-02-03 |  |  | 0d |  |  | Sensores |  | 4424h |  | 42,520 |  |
| 23 | 2.1 | **1. Creating Data** |  | 298d | 2018-11-06 | 2019-12-26 |  |  | 19d |  |  |  |  | 248h |  | 760 |  |
| 24 | 2.1.1 | Revisión del proyecto |  | 4d | 2018-11-06 | 2018-11-19 | 21 |  | 315d | 0d | start no earlier than 2018-10-01 |  | Elsa Cerezo Fernandez | 32h |  | 320 |  |
| 25 | 2.1.2 | Revisión Data Management Plan (DMP) |  | 5d | 2018-11-13 | 2018-11-19 | 24FF |  | 315d |  |  |  | Miguel Traspuesto Abascal | 40h |  | 200 |  |
| 26 | 2.1.3 | Revisión Diagrama de Gantt |  | 2d | 2018-11-08 | 2018-11-09 | 24SS+2d |  | 321d |  |  |  | Razvan Pascal | 16h |  | 240 |  |
| 27 | 2.1.4 | Revisión y mantenimiento de los sensores | manual | 20d | 2018-12-03 | 2018-12-28 |  |  |  |  |  |  | Empresa externa | 160h |  |  |  |
| 28 | 2.1.5 | Revisión del DMP | manual | 4d | 2019-06-10 | 2019-12-26 |  |  |  |  |  |  |  |  |  |  |  |

| ID | WBS | Task | Type | Duration | Start | Finish | Predecessors | Total slack | Free slack | Constraint | Calendar | Resources | Work | Cost |
| --- | --- | --- | --- | --- | --- | --- | --- | --- | --- | --- | --- | --- | --- | --- |
| 29 | 2.2 | **2. Processing Data** |  | 366d | 2019-01-01 | 2020-01-01 |  | 1d |  |  | Sensores |  | 4176h | 41,760 |
| 30 | 2.2.1 | Recolección de los datos |  | 365d | 2019-01-01 | 2019-12-31 |  | 13d | 0d | start no earlier than 2019-01-01 | Sensores |  |  |  |
| 31 | 2.2.2 | Curación de los datos | manual | 365d | 2019-01-02 | 2020-01-01 | 30SS+1d |  |  |  | Sensores | Alvaro Ibrain Rodriguez; Miguel Carlos Blanco Cacharron | 4176h | 41,760 |
| 32 | 2.3 | **3. Analysing Data** |  | 11d | 2020-01-15 | 2020-01-29 |  |  |  |  |  |  |  |  |
| 33 | 2.3.1 | Análisis y conclusiones de los datos |  | 10d | 2020-01-15 | 2020-01-28 | 31, 21 | 0d |  |  |  |  |  |  |
| 34 | 2.3.2 | Presentación del informe 2019 | milestone, manual | 1d | 2020-01-29 | 2020-01-29 | 33 |  |  |  |  |  |  |  |
| 35 | 2.4 | **4. Preserving Data** |  | 4d | 2020-01-29 | 2020-02-03 |  | 0d |  |  |  |  |  |  |
| 36 | 2.4.1 | Actualización UCREA | manual | 4d | 2020-01-29 | 2020-02-03 | 31, 33 |  |  |  |  |  |  |  |
| 37 | 2.5 | **5. Giving Access to Data** |  | 1d | 2020-01-29 | 2020-01-29 |  | 3d |  |  |  |  |  |  |
| 38 | 2.5.1 | Repositorio UCREA |  | 1d | 2020-01-29 | 2020-01-29 | 31, 33 | 3d |  |  |  |  |  |  |
| 39 | 2.6 | **6. Re-Using Data** |  | 1d | 2019-10-01 | 2019-10-01 |  |  |  |  |  |  |  |  |
| 40 | 2.6.1 | Proyecto 2020 |  | 1d | 2019-10-01 | 2019-10-01 |  | 89d |  |  |  |  |  |  |
